How a schedule from MS Project changed from version to version. A marks actual dates.

## Version 1 (saved 2018-01-10)

Note of the change: GBL

| ID | WBS | Task | Duration | Start | Finish | Predecessors | Complete | Constraint |
| --- | --- | --- | --- | --- | --- | --- | --- | --- |
| 1 | 1 | **项目准备阶段** | 16.38ed | 2017-09-27 09:00 | 2017-10-13 18:00 |  | 100% |  |
| 2 |  | 第一周小组会议 | 1h | 2017-09-29 09:00 A | 2017-09-29 10:00 A |  | 100% |  |
| 3 |  | 项目任务确定 | 0.04ed | 2017-10-11 09:00 A | 2017-10-11 10:00 A | 2 | 100% |  |
| 4 |  | 准备项目所需工具 | 0.46ed | 2017-10-11 09:00 A | 2017-10-11 20:00 A | 3 | 100% |  |
| 5 |  | 文档书写与PPT制作 | 0.08ed | 2017-10-12 09:00 A | 2017-10-12 11:00 A | 4 | 100% |  |
| 6 |  | 第三周第一次小组会议 | 1h | 2017-10-12 09:00 A | 2017-10-12 10:00 A | 5 | 100% |  |
| 7 |  | 可行性分析报告 | 0.25d | 2017-10-13 09:00 A | 2017-10-14 08:02 A | 6 | 100% | finish no earlier than 2017-10-13 18:00 |
| 8 |  | 项目章程 | 2h | 2017-10-13 11:00 A | 2017-10-13 14:00 A | 7 | 100% |  |
| 9 | 2 | **项目计划阶段** | 9d | 2017-10-14 09:00 A | 2017-10-22 18:00 | 8 | 100% |  |
| 10 |  | 第三周第二次小组会议 | 1h | 2017-10-14 09:00 A | 2017-10-14 10:00 A | 8 | 100% |  |
| 11 |  | 第四周小组会议 | 1h | 2017-10-19 09:00 A | 2017-10-19 10:00 A | 10 | 100% |  |
| 12 |  | OBS | 0.25d | 2017-10-20 09:00 A | 2017-10-20 11:00 A | 11 | 100% | start no earlier than 2017-10-20 09:00 |
| 13 |  | WBS | 0.25d | 2017-10-20 09:00 A | 2017-10-20 11:00 A | 12 | 100% |  |
| 14 |  | 甘特图 | 0.5d | 2017-10-20 09:00 A | 2017-10-20 14:00 A | 13 | 100% |  |
| 15 |  | 项目总体计划书 | 4h | 2017-10-20 09:00 A | 2017-10-20 14:00 A | 14 | 100% | start no earlier than 2017-10-20 09:00 |
| 16 | 3 | **制定需求工程项目计划** | 80.38ed | 2017-10-25 09:00 A | 2018-01-13 18:00 | 15 | 100% |  |
| 17 | 3.1 | **需求开发** | 60.38ed | 2017-10-25 09:00 A | 2017-12-24 18:00 | 15 | 100% |  |
| 18 | 3.1.1 | **需求获取** | 60.38ed | 2017-10-25 09:00 A | 2017-12-24 18:00 | 15 | 100% |  |
| 19 |  | 第五周第一次小组会议 | 1h | 2017-10-25 09:00 A | 2017-10-25 10:00 A | 15 | 100% |  |
| 20 |  | 第五周第二次小组会议 | 1h | 2017-10-27 09:00 A | 2017-10-27 10:00 A | 19 | 100% |  |
| 21 |  | 确定需求开发过程 | 1h | 2017-11-02 09:00 A | 2017-11-02 10:00 A | 20 | 100% | start no earlier than 2017-11-02 09:00 |
| 22 |  | 编写项目视图与范围 | 1h | 2017-11-03 09:00 A | 2017-11-03 10:00 A | 21 | 100% |  |
| 23 |  | 用户群分类 | 1h | 2017-11-03 09:00 A | 2017-11-03 10:00 A | 22 | 100% | start no earlier than 2017-11-03 09:00 |
| 24 |  | 需求工程项目评审 | 1h | 2017-11-03 09:00 A | 2017-11-03 10:00 A | 23 | 100% |  |
| 25 |  | 第六周小组会议 | 1h | 2017-11-04 09:00 A | 2017-11-04 10:00 A | 24 | 100% |  |
| 26 |  | 项目发起人访谈 | 1h | 2017-11-05 09:00 A | 2017-11-05 10:00 A | 25 | 100% |  |
| 27 |  | 第七周小组会议 | 1h | 2017-11-08 09:00 A | 2017-11-08 10:00 A | 26 | 100% |  |
| 28 |  | 项目发起人二次访谈 | 1h | 2017-11-09 09:00 A | 2017-11-09 10:00 A | 27 | 100% |  |
| 29 |  | 选择产品代表 | 1h | 2017-11-12 09:00 A | 2017-11-12 10:00 A | 28 | 100% | start no earlier than 2017-11-12 09:00 |
| 30 |  | 第八周小组会议 | 1h | 2017-11-15 09:00 A | 2017-11-15 10:00 A | 29 | 100% |  |
| 31 |  | 教师用户代表访谈 | 1h | 2017-11-16 09:00 A | 2017-11-16 10:00 A | 30 | 100% |  |
| 32 |  | 建立核心队伍 | 1h | 2017-11-17 09:00 A | 2017-11-17 10:00 A | 31 | 100% |  |
| 33 |  | 第九周第一次小组会议 | 1h | 2017-11-20 09:00 A | 2017-11-20 10:00 A | 32 | 100% |  |
| 34 |  | 教师用户代表二次访谈 | 0.5h | 2017-11-23 09:00 A | 2017-11-23 09:30 A | 33 | 100% |  |
| 35 |  | 第九周第二次小组会议 | 1h | 2017-11-25 09:00 A | 2017-11-25 10:00 A | 34 | 100% |  |
| 36 |  | 确定使用实例 | 1h | 2017-11-25 09:00 A | 2017-11-25 10:00 A | 35 | 100% |  |
| 37 |  | 第十周小组会议 | 1h | 2017-12-02 09:00 A | 2017-12-02 10:00 A | 36 | 100% |  |
| 38 |  | 学生用户代表访谈 | 1h | 2017-12-02 09:00 A | 2017-12-02 10:00 A | 37 | 100% |  |
| 39 |  | 游客用户代表访谈 | 1h | 2017-12-03 09:00 A | 2017-12-03 10:00 A | 38 | 100% |  |
| 40 |  | 第十二周小组会议 | 1h | 2017-12-11 09:00 A | 2017-12-11 10:00 A | 39 | 100% |  |
| 41 |  | 管理员代表第一次访谈 | 1h | 2017-12-11 09:00 A | 2017-12-11 10:00 A | 40 | 100% |  |
| 42 |  | 第十三周小组会议 | 1h | 2017-12-18 09:00 A | 2017-12-18 10:00 A | 41 | 100% |  |
| 43 |  | 管理员代表第二次访谈 | 1h | 2017-12-18 09:00 A | 2017-12-18 10:00 A | 42 | 100% |  |
| 44 |  | 召开应用程序开发联系会议 | 1h | 2017-12-18 10:00 A | 2017-12-18 11:00 A | 43 | 100% |  |
| 45 |  | 分析用户工作流程 | 1h | 2017-12-21 09:00 A | 2017-12-21 10:00 A | 44 | 100% |  |
| 46 |  | 确定质量属性 | 1h | 2017-12-21 10:00 A | 2017-12-21 11:00 A | 45 | 100% |  |
| 47 |  | 检查问题报告 | 1h | 2017-12-22 09:00 A | 2017-12-22 10:00 A | 46 | 100% |  |
| 48 | 3.1.2 | **需求分析** | 48.38ed | 2017-11-06 09:00 | 2017-12-24 18:00 | 15 | 100% |  |
| 49 |  | 绘制关联图 | 1h | 2017-11-06 11:00 A | 2017-11-06 12:00 A | 22 | 100% |  |
| 50 |  | 创建开发原型 | 30h | 2017-11-07 09:00 A | 2017-12-18 11:40 A | 49 | 100% | finish no earlier than 2017-12-16 18:00 |
| 51 |  | 确定需求优先级 | 1h | 2017-11-18 09:00 A | 2017-11-18 10:00 A | 50 | 100% | start no earlier than 2017-11-08 09:00 |
| 52 |  | 为需求建立模型 | 6h | 2017-11-25 09:00 A | 2017-12-21 18:00 A | 51 | 100% | finish no earlier than 2017-12-21 18:00 |
| 53 |  | 编写数据字典 | 2h | 2017-12-01 09:00 A | 2017-12-16 18:00 A | 52 | 100% | finish no earlier than 2017-12-16 18:00 |
| 54 |  | 应用质量功能调配 | 1h | 2017-12-23 09:00 A | 2017-12-23 10:00 A | 53 | 100% | start no earlier than 2017-12-23 09:00 |
| 55 | 3.1.3 | **需求规格说明** | 35.38ed | 2017-11-19 09:00 | 2017-12-24 18:00 | 15 | 100% |  |
| 56 |  | 采用软件需求规格说明模板 | 2h | 2017-11-25 09:00 A | 2017-11-25 11:00 A | 36 | 100% | start no earlier than 2017-11-25 09:00 |
| 57 |  | 指明需求来源 | 1h | 2017-12-01 09:00 A | 2017-12-01 10:00 A | 56 | 100% | start no earlier than 2017-12-01 09:00 |
| 58 |  | 记录业务规范 | 2h | 2017-12-01 09:00 A | 2017-12-01 11:00 A | 57 | 100% | start no earlier than 2017-11-17 09:00 |
| 59 |  | 为每一需求注上标号 | 1h | 2017-12-07 09:00 A | 2017-12-07 10:00 A | 58 | 100% | start no earlier than 2017-12-07 09:00 |
| 60 |  | 创建需求跟踪能力矩阵 | 3h | 2017-12-24 09:00 A | 2017-12-24 12:00 A | 59 | 100% | start no earlier than 2017-12-24 09:00 |
| 61 |  | 发布SRS | 3h | 2017-12-15 09:00 A | 2017-12-15 12:00 A | 56 | 100% |  |
| 62 |  | 第十三周第二次小组会议(组内评审SRS) | 1h | 2017-12-22 09:00 A | 2017-12-22 10:00 A | 61 | 100% |  |
| 63 | 3.1.4 | **需求规格审核** | 22d | 2017-12-03 09:00 | 2017-12-24 18:00 | 15 | 100% |  |
| 64 |  | 审查需求文档 | 2h | 2017-12-20 09:00 A | 2017-12-20 11:00 A | 61 | 100% | start no earlier than 2017-12-20 09:00 |
| 65 |  | 编写测试用例 | 4h | 2017-12-10 09:00 A | 2017-12-17 18:00 A | 52 | 100% | finish no earlier than 2017-12-17 18:00 |
| 66 |  | 编写用户手册 | 6h | 2017-12-18 13:00 A | 2017-12-19 10:00 A | 50 | 100% | finish no earlier than 2017-12-18 18:00 |
| 67 |  | 确定合格的标准 | 2h | 2017-12-24 09:00 A | 2017-12-24 11:00 A | 66 | 100% | start no earlier than 2017-12-24 09:00 |
| 68 | 3.2 | **需求管理** | 19.38ed | 2017-12-25 09:00 A | 2018-01-13 18:00 | 66 | 100% |  |
| 69 |  | 确定变更控制过程 | 2h | 2017-12-25 09:00 A | 2017-12-25 11:00 A | 67 | 100% |  |
| 70 |  | 建立变更控制委员会 | 2h | 2017-12-25 11:00 A | 2017-12-25 14:00 A | 69 | 100% |  |

| ID | WBS | Task | Duration | Start | Finish | Predecessors | Complete | Constraint |
| --- | --- | --- | --- | --- | --- | --- | --- | --- |
| 71 |  | 使用需求管理工具 | 1h | 2018-01-01 09:00 A | 2018-01-01 10:00 A | 70 | 100% |  |
| 72 |  | 第十五周小组会议 | 1h | 2018-01-04 09:00 A | 2018-01-04 10:00 A | 71 | 100% |  |
| 73 |  | 进行变更影响分析 | 2h | 2018-01-04 09:00 A | 2018-01-04 11:00 A | 72 | 100% | start no earlier than 2018-01-01 09:00 |
| 74 |  | 跟踪每一项变更 | 2h | 2018-01-04 14:00 A | 2018-01-04 16:00 A | 73 | 100% | start no earlier than 2017-12-06 09:00 |
| 75 |  | 编写需求文档的标准版本和控制版本 | 2h | 2018-01-04 16:00 A | 2018-01-05 09:00 A | 74 | 100% | start no earlier than 2017-12-07 09:00 |
| 76 |  | 维护变更历史记录 | 1h | 2018-01-06 09:00 A | 2018-01-06 11:00 A | 75 | 100% | start no earlier than 2018-01-06 09:00 |
| 77 |  | 跟踪需求状态 | 1h | 2018-01-06 10:00 A | 2018-01-06 11:00 A | 76 | 100% | start no earlier than 2017-12-11 09:00 |
| 78 |  | 衡量需求稳定性 | 1h | 2018-01-07 09:00 A | 2018-01-07 10:00 A | 77 | 100% | start no earlier than 2017-12-12 09:00 |
| 79 |  | 第十六周小组会议(组内评审需求变更文档) | 1h | 2018-01-08 09:00 A | 2018-01-08 10:00 A | 78 | 100% |  |
| 80 | 4 | **项目收尾阶段** | 13.38ed | 2018-01-15 09:00 | 2018-01-28 18:00 | 7, 14, 46, 53, 56, 66, 79 |  |  |
| 81 |  | 项目总结报告文档 | 4h | 2018-01-15 09:00 | 2018-01-15 14:00 | 79 |  |  |
| 82 |  | 经验总结 | 1h | 2018-01-16 09:00 | 2018-01-16 10:00 | 81 |  |  |
| 83 |  | 答辩与评价 | 5h | 2018-01-18 09:00 | 2018-01-18 15:00 | 82 |  |  |

## Version 2 (saved 2018-01-17)

Note of the change: GBL

Last finish 2018-01-28 → 2018-01-27 (-1d). Complete tasks 70 → 56.

Added:

| ID | Task | Duration | Start | Finish | Predecessors | Resources |
| --- | --- | --- | --- | --- | --- | --- |
| 8 | 法律可行性分析 | 2eh | 2017-10-13 09:00 A | 2017-10-13 11:00 A | 7 | 周雨璐 |
| 12 | **项目总体计划** | 10.38ed | 2017-10-19 09:00 | 2017-10-29 18:00 | 9, 11 |  |
| 15 | Gant | 4eh | 2017-10-22 09:00 A | 2017-10-22 13:00 A | 14 | 黄鹏羽 |
| 16 | 文档书写与PPT制作 | 0.83ed | 2017-10-20 09:00 A | 2017-10-24 13:00 A | 15 | 葛倍良 [20%]; 黄鹏羽 [20%]; 金浩楠 [20%]; 余倩 [20%]; 周雨璐 [20%] |
| 17 | **需求工程计划书** | 17.38ed | 2017-10-23 09:00 A | 2017-11-09 18:00 | 16 |  |
| 18 | 需求工程计划书--初步版 | 0.75ed | 2017-10-23 09:00 A | 2017-10-24 19:00 A | 16 | 葛倍良 [80%]; 黄鹏羽 [20%] |
| 19 | 需求工程计划书--修改版 | 0.75ed | 2017-11-02 09:00 A | 2017-11-03 03:00 A | 18 | 葛倍良 [20%]; 黄鹏羽 [20%]; 金浩楠 [20%]; 余倩 [20%]; 周雨璐 [20%] |
| 20 | 需求工程计划评审 | 1ed | 2017-11-03 09:00 A | 2017-11-04 09:00 A | 19 | 葛倍良 [20%]; 黄鹏羽 [20%]; 金浩楠 [20%]; 余倩 [20%]; 周雨璐 [20%] |
| 21 | 需求工程计划文档整理与PPT制作 | 4h | 2017-11-06 08:00 A | 2017-11-06 12:00 A | 20 | 葛倍良 [20%]; 黄鹏羽 [20%]; 金浩楠 [20%]; 余倩 [20%]; 周雨璐 [20%] |
| 22 | **QA计划** | 6.38ed | 2017-10-30 09:00 A | 2017-11-05 18:00 | 16 |  |
| 23 | 质量目标设定 | 0.04ed | 2017-10-30 09:00 A | 2017-10-31 09:00 A | 16 | 葛倍良 |
| 26 | 风险管理 | 2h | 2017-11-01 14:00 A | 2017-11-01 16:00 A | 25 | 余倩; 周雨璐 |
| 27 | 文档书写 | 0.21ed | 2017-11-03 14:00 A | 2017-11-03 19:02 A | 26 | 葛倍良; 黄鹏羽; 金浩楠; 余倩; 周雨璐 |
| 31 | 用例描述 | 4h | 2017-11-26 09:00 A | 2017-11-26 14:00 A | 30 | 金浩楠; 葛倍良; 黄鹏羽 |
| 32 | 产品的非功能性需求 | 1h | 2017-11-27 09:00 A | 2017-11-27 10:00 A | 31 | 余倩 |
| 33 | ER图、数据流图及数据字典 | 4h | 2017-12-01 09:00 A | 2017-12-01 14:00 A | 32 | 葛倍良; 黄鹏羽 |
| 34 | 外部接口 | 1h | 2017-12-02 09:00 A | 2017-12-02 10:00 A | 33 | 余倩 |
| 35 | 分析模型 | 1h | 2017-12-03 09:00 A | 2017-12-03 10:00 A | 34 | 黄鹏羽; 金浩楠; 余倩; 周雨璐 |
| 36 | 文档编写与PPT制作 | 3h | 2017-12-17 09:00 A | 2017-12-17 12:00 A | 35 | 葛倍良 [20%]; 黄鹏羽 [20%]; 金浩楠 [20%]; 余倩 [20%]; 周雨璐 [20%] |
| 37 | 软件规格说明书-修改 | 4h | 2017-12-21 09:00 A | 2017-12-21 14:00 A | 36 | 葛倍良 [20%]; 黄鹏羽 [20%]; 金浩楠 [20%]; 余倩 [20%]; 周雨璐 [20%] |
| 38 | 评审 | 2h | 2017-12-23 09:00 A | 2017-12-23 11:00 A | 37 | 葛倍良 [20%]; 黄鹏羽 [20%]; 金浩楠 [20%]; 余倩 [20%]; 周雨璐 [20%] |
| 46 | **软件概要设计说明** | 19.38ed | 2017-12-18 09:00 | 2018-01-06 18:00 | 45 |  |
| 47 | 总体设计 | 2h | 2017-12-25 09:00 A | 2017-12-25 11:00 A | 45 | 周雨璐 |
| 49 | 系统数据结构设计 | 2h | 2017-12-27 09:00 A | 2017-12-27 11:00 A | 48 | 周雨璐 |
| 58 | 支持环境 | 1h | 2017-12-25 09:00 A | 2017-12-25 10:00 A | 38 | 余倩 |
| 63 | 制定计划 | 1h | 2017-12-24 09:00 A | 2017-12-24 10:00 A | 38 | 周雨璐 |
| 64 | 实施 | 1h | 2017-12-25 09:00 A | 2017-12-25 10:00 A | 63 | 周雨璐 |
| 65 | 原则 | 1h | 2017-12-26 09:00 A | 2017-12-26 10:00 A | 64 | 周雨璐 |
| 66 | 文档编写与整理 | 2h | 2017-12-28 09:00 A | 2017-12-28 11:00 | 65 | 周雨璐 |
| 67 | **系统维护计划** | 6.38ed | 2017-12-31 09:00 | 2018-01-06 18:00 | 38 |  |
| 68 | 软件维护 | 1h | 2018-01-04 09:00 A | 2018-01-04 10:00 A | 38 | 黄鹏羽 |
| 69 | 文档编写与整理 | 1h | 2018-01-04 09:00 A | 2018-01-04 10:00 A | 68 | 黄鹏羽 |
| 70 | **项目总结报告** | 13.38ed | 2018-01-14 09:00 A | 2018-01-27 18:00 | 69, 65, 61, 55, 43, 50, 56, 21 |  |
| 71 | 文档编写与PPT制作 | 4h | 2018-01-14 09:00 A | 2018-01-14 14:00 A | 69 | 葛倍良; 黄鹏羽; 金浩楠; 余倩; 周雨璐 |

Removed: 1 项目准备阶段; 4 准备项目所需工具; 6 第三周第一次小组会议; 8 项目章程; 10 第三周第二次小组会议; 11 第四周小组会议; 14 甘特图; 15 项目总体计划书; 17 需求开发; 18 需求获取; 21 确定需求开发过程; 22 编写项目视图与范围; 23 用户群分类; 27 第七周小组会议; 31 教师用户代表访谈; 32 建立核心队伍; 33 第九周第一次小组会议; 36 确定使用实例; 38 学生用户代表访谈; 44 召开应用程序开发联系会议; 45 分析用户工作流程; 46 确定质量属性; 47 检查问题报告; 48 需求分析; 49 绘制关联图; 50 创建开发原型; 52 为需求建立模型; 53 编写数据字典; 54 应用质量功能调配; 55 需求规格说明; 56 采用软件需求规格说明模板; 57 指明需求来源; 58 记录业务规范; 59 为每一需求注上标号; 60 创建需求跟踪能力矩阵; 63 需求规格审核; 65 编写测试用例; 68 需求管理; 70 建立变更控制委员会; 73 进行变更影响分析; 74 跟踪每一项变更; 75 编写需求文档的标准版本和控制版本; 76 维护变更历史记录; 78 衡量需求稳定性

Changed:

| ID | Task | Start | Finish | Duration | Complete | Predecessors | Other |
| --- | --- | --- | --- | --- | --- | --- | --- |
| 1 | **项目启动** | 2017-10-25 09:00 A → 2017-10-11 09:00 A (-14d) | 2018-01-13 18:00 → 2017-10-13 09:00 (-92d) | 80.38ed → 2ed |  | 项目总体计划书 → none | was named 制定需求工程项目计划 |
| 2 | 项目提出 | 2017-12-25 09:00 A → 2017-10-11 09:00 A (-75d) | 2017-12-25 11:00 A → 2017-10-11 09:00 A (-75d) | 2h → 0eh |  | 10 → none | was named 确定变更控制过程; resources 葛倍良 → none |
| 3 | 项目任务确定 |  | 2017-10-11 10:00 A → 2017-10-12 09:00 A (+1d) | 0.04ed → 1h |  | 48 → 2 |  |
| 4 | 文档书写与PPT制作 |  |  | 0.08ed → 2h |  | 准备项目所需工具 → 3 |  |
| 5 | **可行性分析报告** | 2017-11-12 09:00 A → 2017-10-13 09:00 A (-30d) | 2017-11-12 10:00 A → 2017-10-20 18:00 (-23d) | 1h → 7.38ed |  | 42 → 4 | was named 选择产品代表; constraint start no earlier than 2017-11-12 09:00 → none; resources 金浩楠 → none |
| 6 | 技术可行性分析 | 2017-11-18 09:00 A → 2017-10-13 09:00 A (-36d) | 2017-11-18 10:00 A → 2017-10-13 11:00 A (-36d) | 1h → 2eh |  | 创建开发原型 → 4 | was named 确定需求优先级; constraint start no earlier than 2017-11-08 09:00 → none; resources 周雨璐; 金浩楠 → 周雨璐 |
| 7 | 操作可行性分析 | 2017-12-20 09:00 A → 2017-10-13 11:00 A (-68d) | 2017-12-20 11:00 A → 2017-10-13 13:00 A (-68d) | 2h → 2eh |  | 41 → 6 | was named 审查需求文档; constraint start no earlier than 2017-12-20 09:00 → none; resources 葛倍良 → 周雨璐 |
| 9 | 可行性分析文档书写与修改 | 2017-12-18 13:00 A → 2017-10-13 09:00 A (-66d) | 2017-12-19 10:00 A → 2017-10-13 14:00 A (-67d) | 6h → 4h |  | 创建开发原型 → 8 | was named 编写用户手册; constraint finish no earlier than 2017-12-18 18:00 → none; resources 余倩 → 葛倍良 [40%]; 金浩楠 [30%]; 余倩 [30%] |
| 10 | **项目章程** | 2017-12-24 09:00 A → 2017-10-23 09:00 A (-62d) | 2017-12-24 11:00 A → 2017-10-28 18:00 (-57d) | 2h → 5.38ed |  |  | was named 确定合格的标准; constraint start no earlier than 2017-12-24 09:00 → none; resources 葛倍良 [20%]; 黄鹏羽 [20%]; 金浩楠 [20%]; 余倩 [20%]; 周雨璐 [20%] → none |
| 11 | 文档书写与修改 | 2018-01-06 10:00 A → 2017-10-23 09:00 A (-75d) | 2018-01-06 11:00 A → 2017-10-23 14:00 A (-75d) | 1h → 4h |  | 维护变更历史记录 → 9 | was named 跟踪需求状态; constraint start no earlier than 2017-12-11 09:00 → none; resources 周雨璐 → 余倩 |
| 13 | OBS | 2017-10-20 09:00 A → 2017-10-21 09:00 A (+1d) | 2017-10-20 11:00 A → 2017-10-21 11:00 A (+1d) | 0.25d → 2eh |  | 第四周小组会议 → 11 | constraint start no earlier than 2017-10-20 09:00 → none |
| 14 | WBS | 2017-10-20 09:00 A → 2017-10-21 09:00 A (+1d) | 2017-10-20 11:00 A → 2017-10-21 11:00 A (+1d) | 0.25d → 2eh |  |  |  |
| 24 | 评估与测试 | 2018-01-15 09:00 → 2017-10-31 09:00 A (-76d) | 2018-01-28 18:00 → 2017-11-01 09:00 A (-88d) | 13.38ed → 0.21ed | 0% → 100% | 30, 甘特图, 确定质量属性, 编写数据字典, 采用软件需求规格说明模板, 9, 61 → 23 | was named 项目收尾阶段; resources none → 金浩楠; 余倩; 周雨璐 |
| 25 | 质量记录 | 2018-01-15 09:00 → 2017-10-31 14:00 A (-76d) | 2018-01-15 14:00 → 2017-10-31 16:00 A (-76d) | 4h → 2h | 0% → 100% | 61 → 24 | was named 项目总结报告文档; resources 葛倍良 [20%]; 黄鹏羽 [20%]; 金浩楠 [20%]; 余倩 [20%]; 周雨璐 [20%] → 金浩楠 |
| 28 | **软件需求规格说明书** | 2017-10-25 09:00 A → 2017-11-19 09:00 A (+25d) | 2017-10-25 10:00 A → 2017-12-24 18:00 (+60d) | 1h → 35.38ed |  | 项目总体计划书 → 27 | was named 第五周第一次小组会议; resources 葛倍良 [20%]; 黄鹏羽 [20%]; 金浩楠 [20%]; 余倩 [20%]; 周雨璐 [20%] → none |
| 29 | 系统概述编写 | 2017-10-14 09:00 A → 2017-11-19 09:00 A (+36d) | 2017-10-22 18:00 → 2017-11-19 10:00 A (+28d) | 9d → 1h |  | 项目章程 → 27 | was named 项目计划阶段; resources none → 余倩 |
| 30 | 功能需求分类 | 2017-10-13 09:00 A → 2017-11-24 09:00 A (+42d) | 2017-10-14 08:02 A → 2017-11-24 11:00 A (+41d) | 0.25d → 2h |  | 第三周第一次小组会议 → 29 | was named 可行性分析报告; constraint finish no earlier than 2017-10-13 18:00 → none; resources 葛倍良; 金浩楠; 余倩; 周雨璐 → 黄鹏羽 |
| 39 | **软件需求变更文档** | 2017-11-05 09:00 A → 2017-12-25 09:00 (+50d) | 2017-11-05 10:00 A → 2018-01-14 18:00 (+70d) | 1h → 20.38ed |  | 45 → 38 | was named 项目发起人访谈; resources 葛倍良; 黄鹏羽; 金浩楠; 周雨璐 → none |
| 40 | 需求跟踪及变更影响分析 | 2017-11-03 09:00 A → 2018-01-04 09:00 A (+62d) | 2017-11-03 10:00 A → 2018-01-04 14:00 A (+62d) | 1h → 4h |  | 用户群分类 → 38 | was named 需求工程项目评审; resources 葛倍良; 黄鹏羽; 金浩楠; 余倩; 周雨璐 → 葛倍良 |
| 41 | 文档编写与PPT制作 | 2017-12-15 09:00 A → 2017-12-30 09:00 A (+15d) | 2017-12-15 12:00 A → 2017-12-30 12:00 A (+15d) |  |  | 采用软件需求规格说明模板 → 40 | was named 发布SRS; resources 葛倍良; 黄鹏羽; 金浩楠; 余倩; 周雨璐 → 葛倍良 [20%]; 黄鹏羽 [20%]; 金浩楠 [20%]; 余倩 [20%]; 周雨璐 [20%] |
| 42 | 软件需求变更文档-修改 | 2017-11-09 09:00 A → 2018-01-07 09:00 A (+59d) | 2017-11-09 10:00 A → 2018-01-07 14:00 A (+59d) | 1h → 4h |  | 第七周小组会议 → 41 | was named 项目发起人二次访谈; resources 葛倍良; 黄鹏羽; 金浩楠; 余倩; 周雨璐 → 葛倍良 [20%]; 黄鹏羽 [20%]; 金浩楠 [20%]; 余倩 [20%]; 周雨璐 [20%] |
| 43 | 评审 | 2017-12-03 09:00 A → 2018-01-11 09:00 A (+39d) | 2017-12-03 10:00 A → 2018-01-11 11:00 A (+39d) | 1h → 2h |  | 学生用户代表访谈 → 42 | was named 游客用户代表访谈; resources 余倩; 周雨璐 → 葛倍良 [20%]; 黄鹏羽 [20%]; 金浩楠 [20%]; 余倩 [20%]; 周雨璐 [20%] |
| 44 | **系统设计与实现计划** | 2017-11-23 09:00 A → 2017-12-18 09:00 A (+25d) | 2017-11-23 09:30 A → 2017-12-24 18:00 (+31d) | 0.5h → 6.38ed |  | 第九周第一次小组会议 → 36 | was named 教师用户代表二次访谈; resources 葛倍良; 黄鹏羽; 金浩楠; 余倩; 周雨璐 → none |
| 45 | 计划制定 | 2017-11-04 09:00 A → 2017-12-18 09:00 A (+44d) | 2017-11-04 10:00 A → 2017-12-18 11:00 A (+44d) | 1h → 2h |  | 40 → 36 | was named 第六周小组会议; resources 葛倍良 [20%]; 黄鹏羽 [20%]; 金浩楠 [20%]; 周雨璐 [20%]; 余倩 [20%] → 金浩楠 |
| 48 | 子系统设计 | 2017-09-29 09:00 A → 2017-12-26 09:00 A (+88d) | 2017-09-29 10:00 A → 2017-12-26 11:00 A (+88d) | 1h → 2h |  | none → 47 | was named 第一周小组会议; resources 葛倍良 [20%]; 黄鹏羽 [20%]; 金浩楠 [20%]; 余倩 [20%]; 周雨璐 [20%] → 周雨璐 |
| 50 | 系统出错处理设计 | 2017-10-27 09:00 A → 2017-12-28 09:00 A (+62d) | 2017-10-27 10:00 A → 2017-12-28 11:00 A (+62d) | 1h → 2h |  | 28 → 49 | was named 第五周第二次小组会议; resources 葛倍良 [20%]; 黄鹏羽 [20%]; 金浩楠 [20%]; 余倩 [20%]; 周雨璐 [20%] → 周雨璐 |
| 51 | **测试计划** | 2017-11-15 09:00 A → 2017-12-18 09:00 A (+33d) | 2017-11-15 10:00 A → 2018-01-06 18:00 (+52d) | 1h → 19.38ed |  | 5 → 36 | was named 第八周小组会议; resources 葛倍良 [20%]; 黄鹏羽 [20%]; 金浩楠 [20%]; 余倩 [20%]; 周雨璐 [20%] → none |
| 52 | 测试策略 | 2017-11-25 09:00 A → 2017-12-18 09:00 A (+23d) | 2017-11-25 10:00 A → 2017-12-18 10:00 A (+23d) |  |  | 44 → 36 | was named 第九周第二次小组会议; resources 葛倍良 [20%]; 黄鹏羽 [20%]; 金浩楠 [20%]; 余倩 [20%]; 周雨璐 [20%] → 金浩楠 |
| 53 | 测试方法 | 2017-12-02 09:00 A → 2017-12-20 09:00 A (+18d) | 2017-12-02 10:00 A → 2017-12-20 11:00 A (+18d) | 1h → 2h |  | 确定使用实例 → 52 | was named 第十周小组会议; resources 葛倍良 [20%]; 黄鹏羽 [20%]; 金浩楠 [20%]; 余倩 [20%]; 周雨璐 [20%] → 金浩楠 |
| 54 | 测试组织 | 2017-12-11 09:00 A → 2017-12-21 09:00 A (+10d) | 2017-12-11 10:00 A → 2017-12-21 10:00 A (+10d) |  |  | 43 → 53 | was named 第十二周小组会议; resources 葛倍良 [20%]; 黄鹏羽 [20%]; 金浩楠 [20%]; 余倩 [20%]; 周雨璐 [20%] → 金浩楠 |
| 55 | 资源需求 | 2017-12-11 09:00 A → 2017-12-22 09:00 A (+11d) | 2017-12-11 10:00 A → 2017-12-22 11:00 A (+11d) | 1h → 2h |  |  | was named 管理员代表第一次访谈; resources 葛倍良; 黄鹏羽; 金浩楠; 余倩; 周雨璐 → 金浩楠 |
| 56 | 测试过程管理 | 2017-12-18 09:00 A → 2017-12-23 09:00 A (+5d) | 2017-12-18 10:00 A → 2017-12-23 11:00 A (+5d) | 1h → 2h |  |  | was named 第十三周小组会议; resources 葛倍良 [20%]; 黄鹏羽 [20%]; 金浩楠 [20%]; 余倩 [20%]; 周雨璐 [20%] → 金浩楠 |
| 57 | **安装部署计划** | 2017-12-18 09:00 A → 2017-12-24 09:00 (+6d) | 2017-12-18 10:00 A → 2017-12-31 18:00 (+13d) | 1h → 7.38ed |  | 56 → 38 | was named 管理员代表第二次访谈; resources 葛倍良; 黄鹏羽; 金浩楠; 余倩; 周雨璐 → none |
| 59 | 数据实施计划 | 2018-01-04 09:00 A → 2017-12-26 09:00 A (-9d) | 2018-01-04 10:00 A → 2017-12-26 11:00 A (-9d) | 1h → 2h |  | 62 → 58 | was named 第十五周小组会议; resources 葛倍良 [20%]; 黄鹏羽 [20%]; 金浩楠 [20%]; 余倩 [20%]; 周雨璐 [20%] → 余倩 |
| 60 | 项目进度 | 2017-12-22 09:00 A → 2017-12-27 09:00 A (+5d) | 2017-12-22 10:00 A → 2017-12-27 11:00 A (+5d) | 1h → 2h |  | 41 → 59 | was named 第十三周第二次小组会议(组内评审SRS); resources 葛倍良 [20%]; 黄鹏羽 [20%]; 金浩楠 [20%]; 余倩 [20%]; 周雨璐 [20%] → 余倩 |
| 61 | 文档编写与整理 | 2018-01-08 09:00 A → 2017-12-31 09:00 A (-8d) | 2018-01-08 10:00 A → 2017-12-31 11:00 A (-8d) | 1h → 2h |  | 衡量需求稳定性 → 60 | was named 第十六周小组会议(组内评审需求变更文档); resources 葛倍良; 黄鹏羽; 金浩楠; 余倩; 周雨璐 → 余倩 |
| 62 | **培训计划** | 2018-01-01 09:00 A → 2017-12-24 09:00 A (-8d) | 2018-01-01 10:00 A → 2018-01-06 18:00 (+5d) | 1h → 13.38ed | 100% → 80% | 建立变更控制委员会 → 38 | was named 使用需求管理工具; resources 葛倍良 → none |
| 72 | 经验总结 | 2018-01-16 09:00 → 2018-01-15 09:00 A (-1d) | 2018-01-16 10:00 → 2018-01-15 10:00 A (-1d) |  | 0% → 100% | 25 → 71 | resources 葛倍良 [20%]; 黄鹏羽 [20%]; 金浩楠 [20%]; 余倩 [20%]; 周雨璐 [20%] → 葛倍良; 黄鹏羽; 金浩楠; 余倩; 周雨璐 |
